# Gantt_chart

How a schedule from MS Project changed from version to version. A marks actual dates.

## Version 1 (saved 2019-06-07, file aa5-b6-Gantt_chart.mpp)

Note of the change: تکمیل مشخصات-زمان بندی-نمودارهای پیشرفت-مقطع بندی

| ID | WBS | Task | Duration | Start | Finish | Predecessors | Complete | Total float | Constraint |
| --- | --- | --- | --- | --- | --- | --- | --- | --- | --- |
| 1 | 1 | **نصب، راه اندازی و بهره برداری از یک سامانه پیام رسان اجتماعی** | 63.4d | 2008-01-03 A | 2008-04-01 |  | 72% | 0d |  |
| 2 | 1.1 | **sprint 1** | 17d | 2008-01-03 A | 2008-01-28 |  | 80% | 1d |  |
| 3 |  | شروع فاز عملی پروژه | 2.5d | 2008-01-03 | 2008-01-07 |  |  | 15.5d |  |
| 4 | 1.1.2 | **زیرساخت پردازشی** | 17d | 2008-01-03 A | 2008-01-28 |  | 99% | 1d |  |
| 5 |  | خرید زیرساخت پردازشی | 2.62d | 2008-01-03 A | 2008-01-07 A |  | 100% |  |  |
| 6 | 1.1.2.2 | **سرویس دهنده** | 6.25d | 2008-01-03 A | 2008-01-11 A |  | 100% |  |  |
| 7 |  | تامین سرویس دهنده (سرور) | 1.5d | 2008-01-03 A | 2008-01-04 A |  | 100% |  |  |
| 8 | 1.1.2.2.2 | **پهنای باند سرویس دهنده** | 1.25d | 2008-01-10 A | 2008-01-11 A |  | 100% |  |  |
| 9 |  | تامین عرض باند سرویس دهنده | 1.25d | 2008-01-10 A | 2008-01-11 A | 7 | 100% |  |  |
| 10 | 1.1.2.3 | **خدمت افزار های زیرساخت پردازشی** | 9d | 2008-01-15 A | 2008-01-28 |  | 99% | 1d |  |
| 11 |  | نصب خدمت افزار های زیرساخت پردازشی | 2.88d | 2008-01-15 A | 2008-01-17 A | 5, 7, 8, 9 | 100% |  |  |
| 12 |  | تنظیم و راه اندازی خدمت افزار های زیرساخت پردازشی | 1.5d | 2008-01-18 A | 2008-01-21 A | 11 | 100% |  |  |
| 13 |  | آماده شدن زیرساخت پردازشی | 0d | 2008-01-28 | 2008-01-28 | 12, 3, 5, 6, 7, 8, 9, 11 |  | 1d | start no earlier than 2008-01-28 |
| 14 | 1.2 | **sprint 2** | 10d | 2008-01-29 A | 2008-02-11 | 2 | 84% | 35.4d |  |
| 15 | 1.2.1 | **شبکه ارتباطی** | 10d | 2008-01-29 A | 2008-02-11 |  | 84% | 35.4d |  |
| 16 |  | تامین شبکه ارتباطی | 3.75d | 2008-01-29 A | 2008-02-01 |  | 80% | 41.65d |  |
| 17 |  | راه اندازی شبکه ارتباطی | 2.5d | 2008-02-01 A | 2008-02-05 A | 16 | 100% |  |  |
| 18 |  | تنظیم شبکه ارتباطی | 3d | 2008-02-07 A | 2008-02-11 | 17 | 75% | 19d |  |
| 19 | 1.3 | **sprint 3** | 22.5d | 2008-02-12 A | 2008-03-13 |  | 64% | 12.2d |  |
| 20 | 1.3.1 | **خدمت افزار پیام رسان** | 22.5d | 2008-02-12 A | 2008-03-13 |  | 64% | 12.2d |  |
| 21 |  | خرید خدمت افزار پیام رسان | 0.5d | 2008-02-12 A | 2008-02-12 A | 2, 14 | 100% |  |  |
| 22 |  | آموزش خدمت افزار پیام رسان | 2.62d | 2008-02-15 A | 2008-02-19 A | 21 | 100% |  |  |
| 23 |  | نصب خدمت افزار پیام رسان | 2.5d | 2008-02-15 A | 2008-02-19 A | 21 | 100% |  |  |
| 24 |  | تنظیم و راه اندازی حدمت افزار پیام رسان | 3.25d | 2008-02-21 A | 2008-02-26 A | 21, 23 | 100% |  |  |
| 25 |  | آماده شن خدمت افزار | 1.5d | 2008-02-28 A | 2008-03-03 | 21, 22, 23, 24 |  | 20.2d |  |
| 26 | 1.3.1.6 | **آزمایش خدمت افزار پیام رسان** | 10.5d | 2008-02-28 A | 2008-03-13 |  | 45% | 12.2d |  |
| 27 |  | ارزیابی امنیتی خدمت افزار پیام رسان اجتماعی | 6d | 2008-02-28 A | 2008-03-06 | 24 | 50% | 4.5d |  |
| 28 |  | ارزیابی کارایی خدمت افزار پیام رسان اجتماعی | 9d | 2008-02-28 A | 2008-03-11 | 24 | 50% | 1.5d |  |
| 29 |  | در اختیار داشتن خدمت افزار مطمئن | 1.5d | 2008-03-11 A | 2008-03-13 | 27, 28 |  | 12.2d |  |
| 30 | 1.3.1.7 | **کاربران خدمت افزار** | 19.5d | 2008-02-15 A | 2008-03-13 |  | 81% | 12.2d |  |
| 31 |  | نیازسنجی کاربران خدمت افزار | 3.75d | 2008-02-15 A | 2008-02-20 A | 21 | 100% |  |  |
| 32 |  | دسته بندی کاربران خدمت افزار | 1d | 2008-03-12 A | 2008-03-12 | 31 | 50% | 0.5d |  |
| 33 |  | تحویل خدمت افزار | 0.5d | 2008-03-12 A | 2008-03-13 | 31, 32 |  | 12.2d |  |
| 34 | 1.4 | **sprint 4** | 35.4d | 2008-02-12 A | 2008-04-01 |  | 77% | 0d |  |
| 35 | 1.4.1 | **سامانه پیام رسان اجتماعی** | 35.4d | 2008-02-12 A | 2008-04-01 |  | 77% | 0d |  |
| 36 |  | بهره برداری از سامانه پیام رسان اجتماعی | 2.88d | 2008-02-12 A | 2008-02-14 A | 18 | 100% |  |  |
| 37 |  | آماده بودن نسخه های اولیه برای ارائه به کاربران | 0d | 2008-02-21 A | 2008-02-21 | 36 | 75% | 27.4d |  |
| 38 |  | ارزیابی امنیت پیام رسان اجتماعی | 5d | 2008-02-22 A | 2008-02-28 A | 18, 37 | 100% |  |  |
| 39 |  | تنظیم امنیتی پیام رسان اجتماعی | 4d | 2008-03-10 A | 2008-03-13 | 36, 38, 40, 18 | 50% | 12.4d |  |
| 40 |  | طراحی تنظیمات امنیتی پیام رسان اجتماعی | 4.62d | 2008-03-04 A | 2008-03-10 | 38, 18 | 86% | 1.38d |  |
| 41 |  | ارزیابی کارایی پیام رسان اجتماعی | 6.12d | 2008-02-22 A | 2008-03-03 A | 36, 18 | 100% |  |  |
| 42 | 1.4.1.7 | **کاربرد افزرا پیام رسان** | 27.4d | 2008-02-22 A | 2008-04-01 | 36 | 60% | 0d |  |
| 43 | 1.4.1.7.1 | **ایجاد کاربردافزار پیام رسان** | 27.4d | 2008-02-22 A | 2008-04-01 |  | 60% | 0d |  |
| 44 | 1.4.1.7.1.1 | **تحلیل کاربرد افزار پیام رسان** | 3.7d | 2008-03-26 A | 2008-03-31 |  | 13% | 0.7d |  |
| 45 |  | ارزیابی امنیتی کاربردافزار پیام رسان اجتماعی | 2d | 2008-03-26 A | 2008-03-27 | 48, 49 | 15% | 2.4d |  |
| 46 |  | آزمایش کاربردافزار پیام رسان اجتماعی | 2d | 2008-03-26 A | 2008-03-27 | 49 | 8% | 0d |  |
| 47 |  | ارزیابی کارایی کاربردافزار پیام رسان اجتماعی | 2d | 2008-03-27 A | 2008-03-31 | 46 | 15% | 0d |  |
| 48 |  | طراحی کاربردافزار پیام رسان | 5.5d | 2008-02-22 A | 2008-02-29 |  | 91% | 3.62d |  |
| 49 |  | پیاده سازی کاربردافزار پیام رسان | 4.12d | 2008-02-29 A | 2008-03-06 A | 48 | 100% |  |  |
| 50 |  | اتمام مراحل اجرایی | 0.7d | 2008-03-27 A | 2008-04-01 | 19, 47, 48, 49 |  | 0d |  |
| 51 |  | sprint 5 | 2d | 2008-01-03 | 2008-01-04 |  |  | 61.4d |  |

## Version 2 (saved 2019-06-07, file aa5-b6-Gantt_chart+.mpp)

Note of the change: تکمیل مشخصات-زمان بندی-نمودارهای پیشرفت-مقطع بندی

Last finish stays 2008-04-01.

Changed:

| ID | Task | Total float | Other |
| --- | --- | --- | --- |
| 1 | **نصب، راه اندازی و بهره برداری از یک سامانه پیام رسان اجتماعی** |  | baseline start none → 2008-01-03; baseline finish none → 2008-04-01 |
| 2 | **sprint 1** |  | baseline start none → 2008-01-03; baseline finish none → 2008-01-28 |
| 3 | شروع فاز عملی پروژه |  | baseline start none → 2008-01-03; baseline finish none → 2008-01-07 |
| 4 | **زیرساخت پردازشی** |  | baseline start none → 2008-01-03; baseline finish none → 2008-01-28 |
| 5 | خرید زیرساخت پردازشی |  | baseline start none → 2008-01-03; baseline finish none → 2008-01-07 |
| 6 | **سرویس دهنده** |  | baseline start none → 2008-01-03; baseline finish none → 2008-01-11 |
| 7 | تامین سرویس دهنده (سرور) |  | baseline start none → 2008-01-03; baseline finish none → 2008-01-04 |
| 8 | **پهنای باند سرویس دهنده** |  | baseline start none → 2008-01-10; baseline finish none → 2008-01-11 |
| 9 | تامین عرض باند سرویس دهنده |  | baseline start none → 2008-01-10; baseline finish none → 2008-01-11 |
| 10 | **خدمت افزار های زیرساخت پردازشی** |  | baseline start none → 2008-01-15; baseline finish none → 2008-01-28 |
| 11 | نصب خدمت افزار های زیرساخت پردازشی |  | baseline start none → 2008-01-15; baseline finish none → 2008-01-17 |
| 12 | تنظیم و راه اندازی خدمت افزار های زیرساخت پردازشی |  | baseline start none → 2008-01-18; baseline finish none → 2008-01-21 |
| 13 | آماده شدن زیرساخت پردازشی |  | baseline start none → 2008-01-28; baseline finish none → 2008-01-28 |
| 14 | **sprint 2** |  | baseline start none → 2008-01-29; baseline finish none → 2008-02-11 |
| 15 | **شبکه ارتباطی** |  | baseline start none → 2008-01-29; baseline finish none → 2008-02-11 |
| 16 | تامین شبکه ارتباطی |  | baseline start none → 2008-01-29; baseline finish none → 2008-02-01 |
| 17 | راه اندازی شبکه ارتباطی |  | baseline start none → 2008-02-01; baseline finish none → 2008-02-05 |
| 18 | تنظیم شبکه ارتباطی |  | baseline start none → 2008-02-07; baseline finish none → 2008-02-11 |
| 19 | **sprint 3** |  | baseline start none → 2008-02-12; baseline finish none → 2008-03-13 |
| 20 | **خدمت افزار پیام رسان** |  | baseline start none → 2008-02-12; baseline finish none → 2008-03-13 |
| 21 | خرید خدمت افزار پیام رسان |  | baseline start none → 2008-02-12; baseline finish none → 2008-02-12 |
| 22 | آموزش خدمت افزار پیام رسان |  | baseline start none → 2008-02-15; baseline finish none → 2008-02-19 |
| 23 | نصب خدمت افزار پیام رسان |  | baseline start none → 2008-02-15; baseline finish none → 2008-02-19 |
| 24 | تنظیم و راه اندازی حدمت افزار پیام رسان |  | baseline start none → 2008-02-21; baseline finish none → 2008-02-26 |
| 25 | آماده شن خدمت افزار |  | baseline start none → 2008-02-28; baseline finish none → 2008-03-03 |
| 26 | **آزمایش خدمت افزار پیام رسان** |  | baseline start none → 2008-02-28; baseline finish none → 2008-03-13 |
| 27 | ارزیابی امنیتی خدمت افزار پیام رسان اجتماعی | 4.5d → 3d | baseline start none → 2008-02-28; baseline finish none → 2008-03-06 |
| 28 | ارزیابی کارایی خدمت افزار پیام رسان اجتماعی | 1.5d → 0d | baseline start none → 2008-02-28; baseline finish none → 2008-03-11 |
| 29 | در اختیار داشتن خدمت افزار مطمئن |  | baseline start none → 2008-03-11; baseline finish none → 2008-03-13 |
| 30 | **کاربران خدمت افزار** |  | baseline start none → 2008-02-15; baseline finish none → 2008-03-13 |
| 31 | نیازسنجی کاربران خدمت افزار |  | baseline start none → 2008-02-15; baseline finish none → 2008-02-20 |
| 32 | دسته بندی کاربران خدمت افزار | 0.5d → 0d | baseline start none → 2008-03-12; baseline finish none → 2008-03-12 |
| 33 | تحویل خدمت افزار |  | baseline start none → 2008-03-12; baseline finish none → 2008-03-13 |
| 34 | **sprint 4** |  | baseline start none → 2008-02-12; baseline finish none → 2008-04-01 |
| 35 | **سامانه پیام رسان اجتماعی** |  | baseline start none → 2008-02-12; baseline finish none → 2008-04-01 |
| 36 | بهره برداری از سامانه پیام رسان اجتماعی |  | baseline start none → 2008-02-12; baseline finish none → 2008-02-14 |
| 37 | آماده بودن نسخه های اولیه برای ارائه به کاربران |  | baseline start none → 2008-02-21; baseline finish none → 2008-02-21 |
| 38 | ارزیابی امنیت پیام رسان اجتماعی |  | baseline start none → 2008-02-22; baseline finish none → 2008-02-28 |
| 39 | تنظیم امنیتی پیام رسان اجتماعی |  | baseline start none → 2008-03-10; baseline finish none → 2008-03-13 |
| 40 | طراحی تنظیمات امنیتی پیام رسان اجتماعی |  | baseline start none → 2008-03-04; baseline finish none → 2008-03-10 |
| 41 | ارزیابی کارایی پیام رسان اجتماعی |  | baseline start none → 2008-02-22; baseline finish none → 2008-03-03 |
| 42 | **کاربرد افزرا پیام رسان** |  | baseline start none → 2008-02-22; baseline finish none → 2008-04-01 |
| 43 | **ایجاد کاربردافزار پیام رسان** |  | baseline start none → 2008-02-22; baseline finish none → 2008-04-01 |
| 44 | **تحلیل کاربرد افزار پیام رسان** |  | baseline start none → 2008-03-26; baseline finish none → 2008-03-31 |
| 45 | ارزیابی امنیتی کاربردافزار پیام رسان اجتماعی |  | baseline start none → 2008-03-26; baseline finish none → 2008-03-27 |
| 46 | آزمایش کاربردافزار پیام رسان اجتماعی |  | baseline start none → 2008-03-26; baseline finish none → 2008-03-27 |
| 47 | ارزیابی کارایی کاربردافزار پیام رسان اجتماعی |  | baseline start none → 2008-03-27; baseline finish none → 2008-03-31 |
| 48 | طراحی کاربردافزار پیام رسان | 3.62d → 17.8d | baseline start none → 2008-02-22; baseline finish none → 2008-02-29 |
| 49 | پیاده سازی کاربردافزار پیام رسان |  | baseline start none → 2008-02-29; baseline finish none → 2008-03-06 |
| 50 | اتمام مراحل اجرایی |  | baseline start none → 2008-03-27; baseline finish none → 2008-04-01 |
| 51 | sprint 5 |  | baseline start none → 2008-01-03; baseline finish none → 2008-01-04 |

## Version 3 (saved 2019-06-07, file aa5.mpp)

Note of the change: تکمیل مشخصات-زمان بندی-نمودارهای پیشرفت-مقطع بندی

Last finish 2008-04-01 → 2008-03-10 (-22d). Complete tasks 15 → 10.

Changed:

| ID | Task | Start | Finish | Duration | Complete | Total float |
| --- | --- | --- | --- | --- | --- | --- |
| 1 | **نصب، راه اندازی و بهره برداری از یک سامانه پیام رسان اجتماعی** |  | 2008-04-01 → 2008-03-06 (-26d) | 63.4d → 45.45d | 72% → 29% |  |
| 2 | **sprint 1** |  | 2008-01-28 A |  | 80% → 100% | 1d → none |
| 3 | شروع فاز عملی پروژه | 2008-01-03 A | 2008-01-07 A |  | 0% → 100% | 15.5d → none |
| 4 | **زیرساخت پردازشی** |  | 2008-01-28 A |  | 99% → 100% | 1d → none |
| 10 | **خدمت افزار های زیرساخت پردازشی** |  | 2008-01-28 A |  | 99% → 100% | 1d → none |
| 13 | آماده شدن زیرساخت پردازشی | 2008-01-28 A | 2008-01-28 A |  | 0% → 100% | 1d → none |
| 14 | **sprint 2** |  |  |  | 84% → 85% | 35.4d → 0d |
| 15 | **شبکه ارتباطی** |  |  |  | 84% → 85% | 35.4d → 0d |
| 16 | تامین شبکه ارتباطی |  | 2008-02-01 → 2008-03-10 A (+38d) | 3.75d → 12.75d | 80% → 100% | 41.65d → none |
| 18 | تنظیم شبکه ارتباطی |  |  |  | 75% → 10% | 19d → 0d |
| 19 | **sprint 3** | 2008-02-12 A → 2008-02-12 | 2008-03-13 → 2008-03-05 (-8d) | 22.5d → 16.75d | 64% → 0% | 12.2d → 0d |
| 20 | **خدمت افزار پیام رسان** | 2008-02-12 A → 2008-02-12 | 2008-03-13 → 2008-03-05 (-8d) | 22.5d → 16.75d | 64% → 0% | 12.2d → 0d |
| 21 | خرید خدمت افزار پیام رسان | 2008-02-12 A → 2008-02-12 | 2008-02-12 A → 2008-02-12 |  | 100% → 0% | none → 0d |
| 22 | آموزش خدمت افزار پیام رسان | 2008-02-15 A → 2008-02-12 (-3d) | 2008-02-19 A → 2008-02-15 (-4d) |  | 100% → 0% | none → 12.12d |
| 23 | نصب خدمت افزار پیام رسان | 2008-02-15 A → 2008-02-12 (-3d) | 2008-02-19 A → 2008-02-14 (-5d) |  | 100% → 0% | none → 0d |
| 24 | تنظیم و راه اندازی حدمت افزار پیام رسان | 2008-02-21 A → 2008-02-15 (-6d) | 2008-02-26 A → 2008-02-20 (-6d) |  | 100% → 0% | none → 0d |
| 25 | آماده شن خدمت افزار | 2008-02-28 A → 2008-02-20 (-8d) | 2008-03-03 → 2008-02-21 (-11d) |  |  | 20.2d → 9d |
| 26 | **آزمایش خدمت افزار پیام رسان** | 2008-02-28 A → 2008-02-20 (-8d) | 2008-03-13 → 2008-03-05 (-8d) |  | 45% → 0% | 12.2d → 0d |
| 27 | ارزیابی امنیتی خدمت افزار پیام رسان اجتماعی | 2008-02-28 A → 2008-02-20 (-8d) | 2008-03-06 → 2008-02-28 (-7d) |  | 50% → 0% |  |
| 28 | ارزیابی کارایی خدمت افزار پیام رسان اجتماعی | 2008-02-28 A → 2008-02-20 (-8d) | 2008-03-11 → 2008-03-04 (-7d) |  | 50% → 0% |  |
| 29 | در اختیار داشتن خدمت افزار مطمئن | 2008-03-11 A → 2008-03-04 (-7d) | 2008-03-13 → 2008-03-05 (-8d) |  |  | 12.2d → 0d |
| 30 | **کاربران خدمت افزار** | 2008-02-15 A → 2008-02-12 (-3d) | 2008-03-13 → 2008-02-19 (-23d) | 19.5d → 5.25d | 81% → 0% | 12.2d → 11d |
| 31 | نیازسنجی کاربران خدمت افزار | 2008-02-15 A → 2008-02-12 (-3d) | 2008-02-20 A → 2008-02-18 (-2d) |  | 100% → 0% | none → 11d |
| 32 | دسته بندی کاربران خدمت افزار | 2008-03-12 A → 2008-02-18 (-23d) | 2008-03-12 → 2008-02-19 (-22d) |  | 50% → 0% | 0d → 11d |
| 33 | تحویل خدمت افزار | 2008-03-12 A → 2008-02-19 (-22d) | 2008-03-13 → 2008-02-19 (-23d) |  |  | 12.2d → 11d |
| 34 | **sprint 4** | 2008-02-12 A → 2008-02-12 | 2008-04-01 → 2008-03-06 (-26d) | 35.4d → 17.45d | 77% → 0% |  |
| 35 | **سامانه پیام رسان اجتماعی** | 2008-02-12 A → 2008-02-12 | 2008-04-01 → 2008-03-06 (-26d) | 35.4d → 17.45d | 77% → 0% |  |
| 36 | بهره برداری از سامانه پیام رسان اجتماعی | 2008-02-12 A → 2008-02-12 | 2008-02-14 A → 2008-02-14 |  | 100% → 0% | none → 0.25d |
| 37 | آماده بودن نسخه های اولیه برای ارائه به کاربران | 2008-02-21 A → 2008-02-14 (-7d) | 2008-02-21 → 2008-02-14 (-7d) |  | 75% → 0% | 27.4d → 0.95d |
| 38 | ارزیابی امنیت پیام رسان اجتماعی | 2008-02-22 A → 2008-02-14 (-8d) | 2008-02-28 A → 2008-02-21 (-7d) |  | 100% → 0% | none → 0.95d |
| 39 | تنظیم امنیتی پیام رسان اجتماعی | 2008-03-10 A → 2008-02-28 (-11d) | 2008-03-13 → 2008-03-05 (-8d) |  | 50% → 0% | 12.4d → 0.95d |
| 40 | طراحی تنظیمات امنیتی پیام رسان اجتماعی | 2008-03-04 A → 2008-02-21 (-12d) | 2008-03-10 → 2008-02-28 (-11d) |  | 86% → 0% | 1.38d → 0.95d |
| 41 | ارزیابی کارایی پیام رسان اجتماعی | 2008-02-22 A → 2008-02-14 (-8d) | 2008-03-03 A → 2008-02-22 (-10d) |  | 100% → 0% | none → 8.45d |
| 42 | **کاربرد افزرا پیام رسان** | 2008-02-22 A → 2008-02-14 (-8d) | 2008-04-01 → 2008-03-06 (-26d) | 27.4d → 14.57d | 60% → 0% |  |
| 43 | **ایجاد کاربردافزار پیام رسان** | 2008-02-22 A → 2008-02-14 (-8d) | 2008-04-01 → 2008-03-06 (-26d) | 27.4d → 14.57d | 60% → 0% |  |
| 44 | **تحلیل کاربرد افزار پیام رسان** | 2008-03-26 A → 2008-02-28 (-27d) | 2008-03-31 → 2008-03-05 (-26d) | 3.7d → 4d | 13% → 0% | 0.7d → 0.25d |
| 45 | ارزیابی امنیتی کاربردافزار پیام رسان اجتماعی | 2008-03-26 A → 2008-02-28 (-27d) | 2008-03-27 → 2008-03-03 (-24d) |  | 15% → 0% | 2.4d → 2.95d |
| 46 | آزمایش کاربردافزار پیام رسان اجتماعی | 2008-03-26 A → 2008-02-28 (-27d) | 2008-03-27 → 2008-03-03 (-24d) |  | 8% → 0% | 0d → 0.25d |
| 47 | ارزیابی کارایی کاربردافزار پیام رسان اجتماعی | 2008-03-27 A → 2008-03-03 (-24d) | 2008-03-31 → 2008-03-05 (-26d) |  | 15% → 0% | 0d → 0.25d |
| 48 | طراحی کاربردافزار پیام رسان | 2008-02-22 A → 2008-02-14 (-8d) | 2008-02-29 → 2008-02-22 (-7d) |  | 91% → 0% | 17.8d → 0.25d |
| 49 | پیاده سازی کاربردافزار پیام رسان | 2008-02-29 A → 2008-02-22 (-7d) | 2008-03-06 A → 2008-02-28 (-7d) |  | 100% → 0% | none → 0.25d |
| 50 | اتمام مراحل اجرایی | 2008-03-27 A → 2008-03-05 (-22d) | 2008-04-01 → 2008-03-06 (-26d) |  |  |  |
| 51 | sprint 5 | 2008-01-03 A | 2008-01-04 A |  | 0% → 100% | 61.4d → none |

## Version 4 (saved 2019-06-07, file aa5-BaseLines_and_Activities.mpp)

Note of the change: تکمیل مشخصات-زمان بندی-نمودارهای پیشرفت-مقطع بندی

Last finish 2008-03-10 → 2008-03-14 (+4d). Complete tasks 10 → 21.

Removed: 51 sprint 5

Changed:

| ID | Task | Start | Finish | Duration | Complete | Total float |
| --- | --- | --- | --- | --- | --- | --- |
| 1 | **نصب، راه اندازی و بهره برداری از یک سامانه پیام رسان اجتماعی** |  | 2008-03-06 → 2008-03-14 (+8d) | 45.45d → 51.62d | 29% → 77% |  |
| 2 | **sprint 1** |  | 2008-01-28 A → 2008-02-15 A (+18d) | 17d → 31.5d |  |  |
| 4 | **زیرساخت پردازشی** |  | 2008-01-28 A → 2008-02-15 A (+18d) | 17d → 31.5d |  |  |
| 10 | **خدمت افزار های زیرساخت پردازشی** |  | 2008-01-28 A → 2008-02-15 A (+18d) | 9d → 23.5d |  |  |
| 12 | تنظیم و راه اندازی خدمت افزار های زیرساخت پردازشی |  | 2008-01-21 A → 2008-02-15 A (+25d) | 1.5d → 6.5d |  |  |
| 14 | **sprint 2** |  | 2008-02-11 A |  | 85% → 100% | 0d → none |
| 15 | **شبکه ارتباطی** |  | 2008-02-11 A |  | 85% → 100% | 0d → none |
| 16 | تامین شبکه ارتباطی |  | 2008-03-10 A → 2008-02-01 A (-38d) | 12.75d → 3.75d |  |  |
| 18 | تنظیم شبکه ارتباطی |  | 2008-02-11 A |  | 10% → 100% | 0d → none |
| 19 | **sprint 3** | 2008-02-12 A | 2008-03-05 → 2008-03-13 (+8d) | 16.75d → 22.5d | 0% → 73% | 0d → 0.42d |
| 20 | **خدمت افزار پیام رسان** | 2008-02-12 A | 2008-03-05 → 2008-03-13 (+8d) | 16.75d → 22.5d | 0% → 73% | 0d → 0.42d |
| 21 | خرید خدمت افزار پیام رسان | 2008-02-12 A | 2008-02-12 A |  | 0% → 100% | 0d → none |
| 22 | آموزش خدمت افزار پیام رسان | 2008-02-12 → 2008-02-15 A (+3d) | 2008-02-15 → 2008-02-19 A (+4d) |  | 0% → 100% | 12.12d → none |
| 23 | نصب خدمت افزار پیام رسان | 2008-02-12 → 2008-02-15 A (+3d) | 2008-02-14 → 2008-02-19 A (+5d) |  | 0% → 100% | 0d → none |
| 24 | تنظیم و راه اندازی حدمت افزار پیام رسان | 2008-02-15 → 2008-02-21 A (+6d) | 2008-02-20 → 2008-02-26 A (+6d) |  | 0% → 100% | 0d → none |
| 25 | آماده شن خدمت افزار | 2008-02-20 → 2008-02-28 A (+8d) | 2008-02-21 → 2008-03-03 A (+11d) |  | 0% → 100% | 9d → none |
| 26 | **آزمایش خدمت افزار پیام رسان** | 2008-02-20 → 2008-02-28 A (+8d) | 2008-03-05 → 2008-03-13 (+8d) |  | 0% → 57% | 0d → 0.42d |
| 27 | ارزیابی امنیتی خدمت افزار پیام رسان اجتماعی | 2008-02-20 → 2008-02-28 A (+8d) | 2008-02-28 → 2008-03-06 (+7d) |  | 0% → 78% | 3d → 3.42d |
| 28 | ارزیابی کارایی خدمت افزار پیام رسان اجتماعی | 2008-02-20 → 2008-02-28 A (+8d) | 2008-03-04 → 2008-03-11 (+7d) |  | 0% → 52% | 0d → 0.42d |
| 29 | در اختیار داشتن خدمت افزار مطمئن | 2008-03-04 → 2008-03-12 (+8d) | 2008-03-05 → 2008-03-13 (+8d) |  |  | 0d → 0.42d |
| 30 | **کاربران خدمت افزار** | 2008-02-12 → 2008-02-15 A (+3d) | 2008-02-19 → 2008-02-22 (+3d) |  | 0% → 71% | 11d → 14.68d |
| 31 | نیازسنجی کاربران خدمت افزار | 2008-02-12 → 2008-02-15 A (+3d) | 2008-02-18 → 2008-02-20 A (+2d) |  | 0% → 100% | 11d → none |
| 32 | دسته بندی کاربران خدمت افزار | 2008-02-18 → 2008-02-20 (+2d) | 2008-02-19 → 2008-02-21 (+2d) |  |  | 11d → 14.68d |
| 33 | تحویل خدمت افزار | 2008-02-19 → 2008-02-21 (+2d) | 2008-02-19 → 2008-02-22 (+3d) |  |  | 11d → 14.68d |
| 34 | **sprint 4** | 2008-02-12 A | 2008-03-06 → 2008-03-14 (+8d) | 17.45d → 23.62d | 0% → 64% |  |
| 35 | **سامانه پیام رسان اجتماعی** | 2008-02-12 A | 2008-03-06 → 2008-03-14 (+8d) | 17.45d → 23.62d | 0% → 64% |  |
| 36 | بهره برداری از سامانه پیام رسان اجتماعی | 2008-02-12 A | 2008-02-14 A |  | 0% → 100% | 0.25d → none |
| 37 | آماده بودن نسخه های اولیه برای ارائه به کاربران | 2008-02-14 → 2008-02-21 A (+7d) | 2008-02-14 → 2008-02-21 A (+7d) |  | 0% → 100% | 0.95d → none |
| 38 | ارزیابی امنیت پیام رسان اجتماعی | 2008-02-14 → 2008-02-22 A (+8d) | 2008-02-21 → 2008-02-28 A (+7d) |  | 0% → 100% | 0.95d → none |
| 39 | تنظیم امنیتی پیام رسان اجتماعی | 2008-02-28 → 2008-03-10 (+11d) | 2008-03-05 → 2008-03-14 (+9d) |  |  | 0.95d → 0d |
| 40 | طراحی تنظیمات امنیتی پیام رسان اجتماعی | 2008-02-21 → 2008-03-04 A (+12d) | 2008-02-28 → 2008-03-10 (+11d) |  | 0% → 36% | 0.95d → 0d |
| 41 | ارزیابی کارایی پیام رسان اجتماعی | 2008-02-14 → 2008-02-22 A (+8d) | 2008-02-22 → 2008-03-03 A (+10d) |  | 0% → 100% | 8.45d → none |
| 42 | **کاربرد افزرا پیام رسان** | 2008-02-14 → 2008-02-22 A (+8d) | 2008-03-06 → 2008-03-14 (+8d) | 14.57d → 15.2d | 0% → 56% | 0d → 0.42d |
| 43 | **ایجاد کاربردافزار پیام رسان** | 2008-02-14 → 2008-02-22 A (+8d) | 2008-03-06 → 2008-03-14 (+8d) | 14.57d → 15.2d | 0% → 56% | 0d → 0.42d |
| 44 | **تحلیل کاربرد افزار پیام رسان** | 2008-02-28 → 2008-03-06 (+7d) | 2008-03-05 → 2008-03-12 (+7d) |  |  | 0.25d → 1.8d |
| 45 | ارزیابی امنیتی کاربردافزار پیام رسان اجتماعی | 2008-02-28 → 2008-03-06 (+7d) | 2008-03-03 → 2008-03-10 (+7d) |  |  | 2.95d → 4.5d |
| 46 | آزمایش کاربردافزار پیام رسان اجتماعی | 2008-02-28 → 2008-03-06 (+7d) | 2008-03-03 → 2008-03-10 (+7d) |  |  | 0.25d → 1.8d |
| 47 | ارزیابی کارایی کاربردافزار پیام رسان اجتماعی | 2008-03-03 → 2008-03-10 (+7d) | 2008-03-05 → 2008-03-12 (+7d) |  |  | 0.25d → 1.8d |
| 48 | طراحی کاربردافزار پیام رسان | 2008-02-14 → 2008-02-22 A (+8d) | 2008-02-22 → 2008-02-29 A (+7d) |  | 0% → 100% | 0.25d → none |
| 49 | پیاده سازی کاربردافزار پیام رسان | 2008-02-22 → 2008-02-29 A (+7d) | 2008-02-28 → 2008-03-06 (+7d) |  | 0% → 89% | 0.25d → 1.8d |
| 50 | اتمام مراحل اجرایی | 2008-03-05 → 2008-03-13 (+8d) | 2008-03-06 → 2008-03-14 (+8d) |  |  | 0d → 0.42d |
